# earned_schedule_es_1_3 V1.5

Schedule from MS Project, 2011-06-01 to 2011-07-14, status date 2011-06-30, costs in €, A marks actual dates.
Entel

## Calendars

- Estándar: Mon-Fri 09:00-13:00, 15:00-19:00; Sat-Sun off.

## Resources

| Resource | Rate |
| --- | --- |
| DC | 1 |

## Schedule

| ID | WBS | Task | Type | Duration | Start | Finish | Predecessors | Remaining | Baseline start | Baseline finish | Baseline duration | Total slack | Free slack | Deadline | Resources | Work | Actual work | Cost | Baseline cost | Actual cost | Text6 | Text7 | Text20 | Text1 |
| --- | --- | --- | --- | --- | --- | --- | --- | --- | --- | --- | --- | --- | --- | --- | --- | --- | --- | --- | --- | --- | --- | --- | --- | --- |
| 1 | 1 | **{SE} - {S} - Cronograma de Proyecto v0.1** |  | 32d | 2011-06-01 A | 2011-07-14 |  | 32d | 2011-06-01 | 2011-07-14 | 32d | 0d |  |  |  | 1259.27h | 594.6h | 1,091.27 | 1,091.27 | 594.6 | 0% | 0% | 30/09/2009 |  |
| 2 | 1.1 | **Procesos de Gestión** |  | 32d | 2011-06-01 A | 2011-07-14 |  | 32d | 2011-06-01 | 2011-07-14 | 32d | -27d | 0d | 2009-10-06 | DC [114.3%] | 1259.27h | 594.6h | 1,091.27 | 1,091.27 | 594.6 | 0% | 0% | 30/10/2009 | 1.1 |
| 3 | 1.1.1 | **Inicio** |  | 23d | 2011-06-01 A | 2011-07-01 |  | 23d | 2011-06-01 | 2011-07-01 | 23d | -18d | 0d | 2009-10-06 | DC | 586.27h | 305.6h | 586.27 | 586.27 | 305.6 | 0% | 0% | 31/08/2011 | 1.2 |
| 4 | 1.1.1.1 | Revisión de metodología de trabajo |  | 5d | 2011-06-01 | 2011-06-07 |  |  | 2011-06-01 | 2011-06-07 | 5d | -441d | 0d | 2009-10-06 | DC | 40h |  | 40 | 40 |  | 0% | 0% | 31/12/2009 | 1.3 |
| 5 | 1.1.1.2 | **Plan del Proyecto** |  | 8d | 2011-06-07 A | 2011-06-17 | 4 | 8d | 2011-06-07 | 2011-06-17 | 8d | -8d | 0d | 2009-10-06 | DC | 292.96h | 121.6h | 292.96 | 292.96 | 121.6 | 0% | 0% | 31/01/2010 | 1.4 |
| 6 | 1.1.1.2.1 | **Elaboración de Plan del Proyecto** |  | 6d | 2011-06-07 A | 2011-06-15 |  | 6d | 2011-06-07 | 2011-06-15 | 6d | -6d | 0d | 2009-10-06 | DC [120%] | 132.96h | 57.6h | 132.96 | 132.96 | 57.6 | 0% | 0% | 28/02/2010 | 1.5 |
| 7 | 1.1.1.2.1.1 | Elaboración WBS, ajuste LMR, definición de entregables |  | 1d | 2011-06-08 | 2011-06-08 |  |  | 2011-06-08 | 2011-06-08 | 1d | -454d | 0d | 2009-10-06 |  |  |  |  |  |  | 0% | 0% | 31/03/2010 | 1.6 |
| 8 | 1.1.1.2.1.2 | Estimación de esfuerzo |  | 1d | 2011-06-08 | 2011-06-08 |  |  | 2011-06-08 | 2011-06-08 | 1d | -459d | 0d | 2009-10-06 |  |  |  |  |  |  | 0% | 0% | 30/04/2010 |  |
| 9 | 1.1.1.2.1.3 | Elaboración de cronograma detallado |  | 1d | 2011-06-09 | 2011-06-09 | 8 |  | 2011-06-09 | 2011-06-09 | 1d | -459d | 0d | 2009-10-06 |  |  |  |  |  |  | 0% | 0% | 31/05/2010 | 2.1 |
| 10 | 1.1.1.2.1.4 | Necesidades del Proyecto |  | 1d | 2011-06-10 | 2011-06-10 | 9 |  | 2011-06-10 | 2011-06-10 | 1d | -459d | 0d | 2009-10-06 | DC [115%] | 9.2h |  | 9.2 | 9.2 |  | 0% | 0% | 30/06/2010 | 2.1.1 |
| 11 | 1.1.1.2.1.5 | Elaboración de Plan de Proyecto |  | 1d | 2011-06-13 | 2011-06-13 | 10 |  | 2011-06-13 | 2011-06-13 | 1d | -459d | 0d | 2009-10-06 | DC [115%] | 9.06h |  | 9.06 | 9.06 |  | 0% | 0% | 31/07/2010 | 2.1.2 |
| 12 | 1.1.1.2.1.6 | Definición de Organización del Proyecto |  | 1d | 2011-06-14 | 2011-06-14 | 11 |  | 2011-06-14 | 2011-06-14 | 1d | -459d | 0d | 2009-10-06 | DC [115%] | 9.1h |  | 9.1 | 9.1 |  | 0% | 0% |  | 2.1.3 |
| 13 | 1.1.1.2.1.7 | Identificación de riesgos del Proyecto |  | 1d | 2011-06-15 | 2011-06-15 | 12 |  | 2011-06-15 | 2011-06-15 | 1d | -459d | 0d | 2009-10-06 | DC | 8h |  | 8 | 8 |  | 0% | 0% |  | 2.2 |
| 14 | 1.1.1.2.1.8 | Plan de riesgos | milestone | 0d | 2011-06-07 | 2011-06-07 |  |  | 2011-06-07 | 2011-06-07 | 0d | -459d | 0d | 2009-10-06 |  |  |  |  |  |  | 0% | 0% |  | 2.3 |
| 15 | 1.1.1.2.1.9 | Plan de comunicaciones |  | 1d | 2011-06-08 | 2011-06-08 | 14 |  | 2011-06-08 | 2011-06-08 | 1d | -459d | 0d | 2009-10-06 | DC | 8h |  | 8 | 8 |  | 0% | 0% |  | 2.4 |
| 16 | 1.1.1.2.1.10 | Plan de gestión de requerimientos |  | 1d | 2011-06-09 | 2011-06-09 | 15 |  | 2011-06-09 | 2011-06-09 | 1d | -459d | 0d | 2009-10-06 |  |  |  |  |  |  | 0% | 0% |  |  |
| 17 | 1.1.1.2.1.11 | Plan de dependencias del proyecto |  | 1d | 2011-06-10 | 2011-06-10 | 16 |  | 2011-06-10 | 2011-06-10 | 1d | -459d | 0d | 2009-10-06 | DC | 8h |  | 8 | 8 |  | 0% | 0% |  | 3.1 |
| 18 | 1.1.1.2.1.12 | Plan de estimación |  | 1d | 2011-06-13 | 2011-06-13 | 17 |  | 2011-06-13 | 2011-06-13 | 1d | -459d | 0d | 2009-10-06 | DC | 8h |  | 8 | 8 |  | 0% | 0% |  | 3.2 |
| 19 | 1.1.1.2.1.13 | Plan de verificación |  | 1d | 2011-06-14 | 2011-06-14 | 18 |  | 2011-06-14 | 2011-06-14 | 1d | -459d | 0d | 2009-10-06 | DC | 8h |  | 8 | 8 |  | 0% | 0% |  | 3.3 |
| 20 | 1.1.1.2.1.14 | Plan de toma de decisiones estructuradas |  | 1d | 2011-06-15 | 2011-06-15 | 19 |  | 2011-06-15 | 2011-06-15 | 1d | -459d | 0d | 2009-10-06 | DC | 8h |  | 8 | 8 |  | 0% | 0% |  | 3.4 |
| 21 | 1.1.1.2.2 | **Revisión interna** |  | 2d | 2011-06-16 | 2011-06-17 |  |  | 2011-06-16 | 2011-06-17 | 2d | -459d | 0d | 2009-10-06 |  | 16h |  | 16 | 16 |  | 0% | 0% |  |  |
| 22 | 1.1.1.2.2.1 | Revisión por el equipo del proyecto |  | 1d | 2011-06-16 | 2011-06-16 | 6 |  | 2011-06-16 | 2011-06-16 | 1d | -459d | 0d | 2009-10-06 | DC | 8h |  | 8 | 8 |  | 0% | 0% |  | 4.1 |
| 23 | 1.1.1.2.2.2 | Ajustes al Plan de Proyecto |  | 1d | 2011-06-17 | 2011-06-17 | 22 |  | 2011-06-17 | 2011-06-17 | 1d | -459d | 0d | 2009-10-06 | DC | 8h |  | 8 | 8 |  | 0% | 0% |  | 4.2 |
| 24 | 1.1.1.2.3 | **Gestión de Configuración** |  | 2d | 2011-06-08 | 2011-06-09 |  |  | 2011-06-08 | 2011-06-09 | 2d | -459d | 0d | 2009-10-06 | DC | 24h |  | 24 | 24 |  | 0% | 0% |  | 5.2 |
| 25 | 1.1.1.2.3.1 | Solicitar auditoria de GC |  | 1d | 2011-06-08 | 2011-06-08 |  |  | 2011-06-08 | 2011-06-08 | 1d | -459d | 0d | 2009-10-06 | DC | 8h |  | 8 | 8 |  | 0% | 0% |  | 5.3 |
| 26 | 1.1.1.2.3.2 | Auditoria de GC de Proyecto Interno |  | 1d | 2011-06-09 | 2011-06-09 | 25 |  | 2011-06-09 | 2011-06-09 | 1d | -459d | 0d | 2009-10-06 |  |  |  |  |  |  | 0% | 0% |  |  |

| ID | WBS | Task | Type | Duration | Start | Finish | Predecessors | Baseline start | Baseline finish | Baseline duration | Total slack | Free slack | Deadline | Resources | Work | Cost | Baseline cost | Text1 | Text6 | Text7 |
| --- | --- | --- | --- | --- | --- | --- | --- | --- | --- | --- | --- | --- | --- | --- | --- | --- | --- | --- | --- | --- |
| 27 | 1.1.1.2.4 | **Aseguramiento de Calidad** |  | 4d | 2011-06-10 | 2011-06-15 |  | 2011-06-10 | 2011-06-15 | 4d | -459d | 0d | 2009-10-06 | DC | 24h | 24 | 24 | 6.1 | 0% | 0% |
| 28 | 1.1.1.2.4.1 | Preparar las actividades de QA |  | 1d | 2011-06-10 | 2011-06-10 | 24 | 2011-06-10 | 2011-06-10 | 1d | -459d | 0d | 2009-10-06 | DC | 8h | 8 | 8 | 6.2 | 0% | 0% |
| 29 | 1.1.1.2.4.2 | Ejecutar la Revisión de QA - Procesos | milestone | 0d | 2011-06-10 | 2011-06-10 | 28 | 2011-06-10 | 2011-06-10 | 0d | -459d | 0d | 2009-10-06 |  |  |  |  |  | 0% | 0% |
| 30 | 1.1.1.2.4.3 | Levantar la No Conformidad |  | 1d | 2011-06-13 | 2011-06-13 | 29 | 2011-06-13 | 2011-06-13 | 1d | -459d | 0d | 2009-10-06 |  |  |  |  |  | 0% | 0% |
| 31 | 1.1.1.2.4.4 | Realizar el seguimiento |  | 1d | 2011-06-14 | 2011-06-14 | 30 | 2011-06-14 | 2011-06-14 | 1d | -459d | 0d | 2009-10-06 | DC | 8h | 8 | 8 | 8.1 | 0% | 0% |
| 32 | 1.1.1.2.4.5 | Elaborar e Informar las actividades de QA a la Gerencia del Servicio |  | 1d | 2011-06-15 | 2011-06-15 | 31 | 2011-06-15 | 2011-06-15 | 1d | -459d | 0d | 2009-10-06 | DC | 8h | 8 | 8 | 8.2 | 0% | 0% |
| 33 | 1.1.1.2.5 | **Revisión por el cliente** |  | 2d | 2011-06-16 | 2011-06-17 |  | 2011-06-16 | 2011-06-17 | 2d | -459d | 0d | 2009-10-06 | DC | 32h | 32 | 32 | 8.3 | 0% | 0% |
| 34 | 1.1.1.2.5.1 | Entrega de Plan del Proyecto |  | 1d | 2011-06-16 | 2011-06-16 | 27 | 2011-06-16 | 2011-06-16 | 1d | -459d | 0d | 2009-10-06 | DC | 8h | 8 | 8 | 8.4 | 0% | 0% |
| 35 | 1.1.1.2.5.2 | Reunión conjunta de revisión del Plan del Proyecto |  | 1d | 2011-06-17 | 2011-06-17 | 34 | 2011-06-17 | 2011-06-17 | 1d | -459d | 0d | 2009-10-06 | DC | 8h | 8 | 8 | 8.5 | 0% | 0% |
| 36 | 1.1.1.3 | **Kick Off Meeting Interno** |  | 4d | 2011-06-20 | 2011-06-23 | 5 | 2011-06-20 | 2011-06-23 | 4d | -459d | 0d | 2009-10-06 |  | 29.31h | 29.31 | 29.31 |  | 0% | 0% |
| 37 | 1.1.1.3.1 | Elaboración de presentación |  | 1d | 2011-06-20 | 2011-06-20 |  | 2011-06-20 | 2011-06-20 | 1d | -459d | 0d | 2009-10-06 | DC | 5.31h | 5.31 | 5.31 | 9.1 | 0% | 0% |
| 38 | 1.1.1.3.2 | Invitación a reunión |  | 1d | 2011-06-21 | 2011-06-21 | 37 | 2011-06-21 | 2011-06-21 | 1d | -459d | 0d | 2009-10-06 | DC | 8h | 8 | 8 | 9.2 | 0% | 0% |
| 39 | 1.1.1.3.3 | Kick Off Meeting Interno |  | 1d | 2011-06-22 | 2011-06-22 | 38 | 2011-06-22 | 2011-06-22 | 1d | -459d | 0d | 2009-10-06 | DC | 8h | 8 | 8 | 9.3 | 0% | 0% |
| 40 | 1.1.1.3.4 | Acta de reunión con acuerdos tomados |  | 1d | 2011-06-23 | 2011-06-23 | 39 | 2011-06-23 | 2011-06-23 | 1d | -459d | 0d | 2009-10-06 | DC | 8h | 8 | 8 | 9.4 | 0% | 0% |
| 41 | 1.1.1.4 | **Kick Off Meeting con Cliente** |  | 6d | 2011-06-24 | 2011-07-01 | 36 | 2011-06-24 | 2011-07-01 | 6d | -459d | 0d | 2009-10-06 |  | 40h | 40 | 40 | 10 | 0% | 0% |
| 42 | 1.1.1.4.1 | Elaboración de presentación |  | 1d | 2011-06-24 | 2011-06-24 |  | 2011-06-24 | 2011-06-24 | 1d | -459d | 0d | 2009-10-06 | DC | 8h | 8 | 8 | 10.1 | 0% | 0% |
| 43 | 1.1.1.4.2 | Aprobación de presentación por Coordinador del Proyecto |  | 1d | 2011-06-27 | 2011-06-27 | 42 | 2011-06-27 | 2011-06-27 | 1d | -459d | 0d | 2009-10-06 | DC | 8h | 8 | 8 | 10.2 | 0% | 0% |
| 44 | 1.1.1.4.3 | Aprobación por Cliente de agenda, presentación y modelo de / Acta |  | 1d | 2011-06-28 | 2011-06-28 | 43 | 2011-06-28 | 2011-06-28 | 1d | -459d | 0d | 2009-10-06 | DC | 8h | 8 | 8 | 10.3 | 0% | 0% |
| 45 | 1.1.1.4.4 | Invitación a reunión |  | 1d | 2011-06-29 | 2011-06-29 | 44 | 2011-06-29 | 2011-06-29 | 1d | -459d | 0d | 2009-10-06 |  |  |  |  | 11 | 0% | 0% |
| 46 | 1.1.1.4.5 | Kick Off Meeting con Cliente |  | 1d | 2011-06-30 | 2011-06-30 | 45 | 2011-06-30 | 2011-06-30 | 1d | -459d | 0d | 2009-10-06 | DC | 8h | 8 | 8 | 12 | 0% | 0% |
| 47 | 1.1.1.4.6 | Acta de reunión con acuerdos tomados |  | 1d | 2011-07-01 | 2011-07-01 | 46 | 2011-07-01 | 2011-07-01 | 1d | -459d | 0d | 2009-10-06 | DC | 8h | 8 | 8 | 13 | 0% | 0% |
| 48 | 1.1.2 | **Asignación, Ejecución, Seguimiento y Control** |  | 9d | 2011-07-04 | 2011-07-14 | 3 | 2011-07-04 | 2011-07-14 | 9d | -459d | 0d | 2009-10-06 | DC | 384h | 216 | 216 | 14 | 0% | 0% |
| 49 | 1.1.2.1 | **Traspaso de Información** |  | 1d | 2011-07-04 | 2011-07-04 |  | 2011-07-04 | 2011-07-04 | 1d | -459d | 0d | 2009-10-06 | DC | 16h | 16 | 16 | 15 | 0% | 0% |
| 50 | 1.1.2.1.1 | Cierre de puntos pendientes del Acta de Traspaso de Información |  | 1d | 2011-07-04 | 2011-07-04 |  | 2011-07-04 | 2011-07-04 | 1d | -459d | 0d | 2009-10-06 | DC | 8h | 8 | 8 | 16 | 0% | 0% |

| ID | WBS | Task | Type | Duration | Start | Finish | Predecessors | Baseline start | Baseline finish | Baseline duration | Total slack | Free slack | Deadline | Resources | Work | Cost | Baseline cost | Text1 | Text6 | Text7 |
| --- | --- | --- | --- | --- | --- | --- | --- | --- | --- | --- | --- | --- | --- | --- | --- | --- | --- | --- | --- | --- |
| 51 | 1.1.2.2 | **Aseguramiento de Calidad Mes 1** |  | 4d | 2011-07-04 | 2011-07-07 |  | 2011-07-04 | 2011-07-07 | 4d | -454d | 0d | 2009-10-06 | DC | 24h | 24 | 24 | 6.1 | 0% | 0% |
| 52 | 1.1.2.2.1 | Preparar las actividades de QA |  | 1d | 2011-07-04 | 2011-07-04 |  | 2011-07-04 | 2011-07-04 | 1d | -454d | 0d | 2009-10-06 | DC | 8h | 8 | 8 | 6.2 | 0% | 0% |
| 53 | 1.1.2.2.2 | Ejecutar la Revisión de QA - Procesos | milestone | 0d | 2011-07-04 | 2011-07-04 | 52 | 2011-07-04 | 2011-07-04 | 0d | -454d | 0d | 2009-10-06 |  |  |  |  |  | 0% | 0% |
| 54 | 1.1.2.2.3 | Levantar la No Conformidad |  | 1d | 2011-07-05 | 2011-07-05 | 53 | 2011-07-05 | 2011-07-05 | 1d | -454d | 0d | 2009-10-06 |  |  |  |  |  | 0% | 0% |
| 55 | 1.1.2.2.4 | Realizar el seguimiento |  | 1d | 2011-07-06 | 2011-07-06 | 54 | 2011-07-06 | 2011-07-06 | 1d | -454d | 0d | 2009-10-06 | DC | 8h | 8 | 8 | 8.1 | 0% | 0% |
| 56 | 1.1.2.2.5 | Elaborar e Informar las actividades de QA a la Gerencia del Servicio |  | 1d | 2011-07-07 | 2011-07-07 | 55 | 2011-07-07 | 2011-07-07 | 1d | -454d | 0d | 2009-10-06 | DC | 8h | 8 | 8 | 8.2 | 0% | 0% |
| 57 | 1.1.2.3 | **Aseguramiento de Calidad Mes 2** |  | 4d | 2011-07-04 | 2011-07-07 |  | 2011-07-04 | 2011-07-07 | 4d | -454d | 0d | 2009-10-06 | DC | 24h | 24 | 24 | 6.1 | 0% | 0% |
| 58 | 1.1.2.3.1 | Preparar las actividades de QA |  | 1d | 2011-07-04 | 2011-07-04 |  | 2011-07-04 | 2011-07-04 | 1d | -454d | 0d | 2009-10-06 | DC | 8h | 8 | 8 | 6.2 | 0% | 0% |
| 59 | 1.1.2.3.2 | Ejecutar la Revisión de QA - Procesos | milestone | 0d | 2011-07-04 | 2011-07-04 | 58 | 2011-07-04 | 2011-07-04 | 0d | -454d | 0d | 2009-10-06 |  |  |  |  |  | 0% | 0% |
| 60 | 1.1.2.3.3 | Levantar la No Conformidad |  | 1d | 2011-07-05 | 2011-07-05 | 59 | 2011-07-05 | 2011-07-05 | 1d | -454d | 0d | 2009-10-06 |  |  |  |  |  | 0% | 0% |
| 61 | 1.1.2.3.4 | Realizar el seguimiento |  | 1d | 2011-07-06 | 2011-07-06 | 60 | 2011-07-06 | 2011-07-06 | 1d | -454d | 0d | 2009-10-06 | DC | 8h | 8 | 8 | 8.1 | 0% | 0% |
| 62 | 1.1.2.3.5 | Elaborar e Informar las actividades de QA a la Gerencia del Servicio |  | 1d | 2011-07-07 | 2011-07-07 | 61 | 2011-07-07 | 2011-07-07 | 1d | -454d | 0d | 2009-10-06 | DC | 8h | 8 | 8 | 8.2 | 0% | 0% |
| 63 | 1.1.2.4 | **Aseguramiento de Calidad Mes 3** |  | 4d | 2011-07-04 | 2011-07-07 |  | 2011-07-04 | 2011-07-07 | 4d | -454d | 0d | 2009-10-06 | DC | 24h | 24 | 24 | 6.1 | 0% | 0% |
| 64 | 1.1.2.4.1 | Preparar las actividades de QA |  | 1d | 2011-07-04 | 2011-07-04 |  | 2011-07-04 | 2011-07-04 | 1d | -454d | 0d | 2009-10-06 | DC | 8h | 8 | 8 | 6.2 | 0% | 0% |
| 65 | 1.1.2.4.2 | Ejecutar la Revisión de QA - Procesos | milestone | 0d | 2011-07-04 | 2011-07-04 | 64 | 2011-07-04 | 2011-07-04 | 0d | -454d | 0d | 2009-10-06 |  |  |  |  |  | 0% | 0% |
| 66 | 1.1.2.4.3 | Levantar la No Conformidad |  | 1d | 2011-07-05 | 2011-07-05 | 65 | 2011-07-05 | 2011-07-05 | 1d | -454d | 0d | 2009-10-06 |  |  |  |  |  | 0% | 0% |
| 67 | 1.1.2.4.4 | Realizar el seguimiento |  | 1d | 2011-07-06 | 2011-07-06 | 66 | 2011-07-06 | 2011-07-06 | 1d | -454d | 0d | 2009-10-06 | DC | 8h | 8 | 8 | 8.1 | 0% | 0% |
| 68 | 1.1.2.4.5 | Elaborar e Informar las actividades de QA a la Gerencia del Servicio |  | 1d | 2011-07-07 | 2011-07-07 | 67 | 2011-07-07 | 2011-07-07 | 1d | -454d | 0d | 2009-10-06 | DC | 8h | 8 | 8 | 8.2 | 0% | 0% |
| 69 | 1.1.2.5 | **Planeamiento, asignación y control semanal** |  | 7d | 2011-07-05 | 2011-07-13 | 49 | 2011-07-05 | 2011-07-13 | 7d | -459d | 0d | 2009-10-06 | DC | 128h | 56 | 56 | 17 | 0% | 0% |
| 70 | 1.1.2.5.1 | **Semana yyyy-mm-dd** |  | 7d | 2011-07-05 | 2011-07-13 |  | 2011-07-05 | 2011-07-13 | 7d | -459d | 0d |  |  | 72h |  |  |  | 0% | 0% |
| 71 | 1.1.2.5.1.1 | Preparar Comité Interno de Proyecto |  | 1d | 2011-07-05 | 2011-07-05 |  | 2011-07-05 | 2011-07-05 | 1d | -459d | 0d |  |  | 8h |  |  |  | 0% | 0% |
| 72 | 1.1.2.5.1.2 | Generar métricas |  | 1d | 2011-07-06 | 2011-07-06 | 71 | 2011-07-06 | 2011-07-06 | 1d | -459d | 0d |  |  | 8h |  |  |  | 0% | 0% |
| 73 | 1.1.2.5.1.3 | Elaborar informe de estado de proyecto |  | 1d | 2011-07-07 | 2011-07-07 | 72 | 2011-07-07 | 2011-07-07 | 1d | -459d | 0d |  |  | 8h |  |  |  | 0% | 0% |
| 74 | 1.1.2.5.1.4 | Comité interno de Proyecto Interno |  | 1d | 2011-07-08 | 2011-07-08 | 73 | 2011-07-08 | 2011-07-08 | 1d | -459d | 0d |  |  | 8h |  |  |  | 0% | 0% |
| 75 | 1.1.2.5.1.5 | Asignación de trabajo |  | 1d | 2011-07-11 | 2011-07-11 | 74 | 2011-07-11 | 2011-07-11 | 1d | -459d | 0d |  |  | 8h |  |  |  | 0% | 0% |
| 76 | 1.1.2.5.1.6 | Consolidación de métricas |  | 1d | 2011-07-12 | 2011-07-12 | 75 | 2011-07-12 | 2011-07-12 | 1d | -459d | 0d |  |  | 8h |  |  |  | 0% | 0% |
| 77 | 1.1.2.5.1.7 | Comité de analistas de Proyectos |  | 1d | 2011-07-13 | 2011-07-13 | 76 | 2011-07-13 | 2011-07-13 | 1d | -459d | 0d |  |  | 8h |  |  |  | 0% | 0% |
| 78 | 1.1.2.5.1.8 | Ejecutar la Revisión de procesos |  | 1d | 2011-07-05 | 2011-07-05 |  | 2011-07-05 | 2011-07-05 | 1d | -453d | 0d |  |  | 8h |  |  |  | 0% | 0% |
| 79 | 1.1.2.5.1.9 | Auditoria semanal de gestión de configuración |  | 1d | 2011-07-05 | 2011-07-05 |  | 2011-07-05 | 2011-07-05 | 1d | -453d | 0d |  |  | 8h |  |  |  | 0% | 0% |

| ID | WBS | Task | Duration | Start | Finish | Predecessors | Baseline start | Baseline finish | Baseline duration | Total slack | Free slack | Work | Text6 | Text7 |
| --- | --- | --- | --- | --- | --- | --- | --- | --- | --- | --- | --- | --- | --- | --- |
| 80 | 1.1.2.6 | **Reuniones de Comité con el Cliente** | 1d | 2011-07-14 | 2011-07-14 | 69 | 2011-07-14 | 2011-07-14 | 1d | -459d | 0d | 96h | 0% | 0% |
| 81 | 1.1.2.6.1 | **Comité Operativo #1** | 1d | 2011-07-14 | 2011-07-14 |  | 2011-07-14 | 2011-07-14 | 1d | -459d | 0d | 24h | 0% | 0% |
| 82 | 1.1.2.6.1.1 | Preparar Comité Operativo | 1d | 2011-07-14 | 2011-07-14 |  | 2011-07-14 | 2011-07-14 | 1d | -459d | 0d | 8h | 0% | 0% |
| 83 | 1.1.2.6.1.2 | Comité Operativo | 1d | 2011-07-14 | 2011-07-14 |  | 2011-07-14 | 2011-07-14 | 1d | -459d | 0d | 8h | 0% | 0% |
| 84 | 1.1.2.6.1.3 | Elaborar acta de Comité Operativo | 1d | 2011-07-14 | 2011-07-14 |  | 2011-07-14 | 2011-07-14 | 1d | -459d | 0d | 8h | 0% | 0% |
| 85 | 1.1.2.6.2 | **Comité Operativo #2** | 1d | 2011-07-14 | 2011-07-14 |  | 2011-07-14 | 2011-07-14 | 1d | -459d | 0d | 24h | 0% | 0% |
| 86 | 1.1.2.6.2.1 | Preparar Comité Operativo | 1d | 2011-07-14 | 2011-07-14 |  | 2011-07-14 | 2011-07-14 | 1d | -459d | 0d | 8h | 0% | 0% |
| 87 | 1.1.2.6.2.2 | Comité Operativo | 1d | 2011-07-14 | 2011-07-14 |  | 2011-07-14 | 2011-07-14 | 1d | -459d | 0d | 8h | 0% | 0% |
| 88 | 1.1.2.6.2.3 | Elaborar acta de Comité Operativo | 1d | 2011-07-14 | 2011-07-14 |  | 2011-07-14 | 2011-07-14 | 1d | -459d | 0d | 8h | 0% | 0% |
| 89 | 1.1.2.6.3 | **Comité Operativo #3** | 1d | 2011-07-14 | 2011-07-14 |  | 2011-07-14 | 2011-07-14 | 1d | -459d | 0d | 24h | 0% | 0% |
| 90 | 1.1.2.6.3.1 | Preparar Comité Operativo | 1d | 2011-07-14 | 2011-07-14 |  | 2011-07-14 | 2011-07-14 | 1d | -459d | 0d | 8h | 0% | 0% |
| 91 | 1.1.2.6.3.2 | Comité Operativo | 1d | 2011-07-14 | 2011-07-14 |  | 2011-07-14 | 2011-07-14 | 1d | -459d | 0d | 8h | 0% | 0% |
| 92 | 1.1.2.6.3.3 | Elaborar acta de Comité Operativo | 1d | 2011-07-14 | 2011-07-14 |  | 2011-07-14 | 2011-07-14 | 1d | -459d | 0d | 8h | 0% | 0% |
| 93 | 1.1.2.6.4 | **Comité Operativo #4** | 1d | 2011-07-14 | 2011-07-14 |  | 2011-07-14 | 2011-07-14 | 1d | -459d | 0d | 24h | 0% | 0% |
| 94 | 1.1.2.6.4.1 | Preparar Comité Operativo | 1d | 2011-07-14 | 2011-07-14 |  | 2011-07-14 | 2011-07-14 | 1d | -459d | 0d | 8h | 0% | 0% |
| 95 | 1.1.2.6.4.2 | Comité Operativo | 1d | 2011-07-14 | 2011-07-14 |  | 2011-07-14 | 2011-07-14 | 1d | -459d | 0d | 8h | 0% | 0% |
| 96 | 1.1.2.6.4.3 | Elaborar acta de Comité Operativo | 1d | 2011-07-14 | 2011-07-14 |  | 2011-07-14 | 2011-07-14 | 1d | -459d | 0d | 8h | 0% | 0% |
| 97 | 1.1.3 | **Cierre** | 8d | 2011-06-01 | 2011-06-10 |  | 2011-06-01 | 2011-06-10 | 8d | -435d | 0d |  | 0% | 0% |
| 98 | 1.1.3.1 | Revisión de Entregables del Proyecto | 1d | 2011-06-01 | 2011-06-01 |  | 2011-06-01 | 2011-06-01 | 1d | -435d | 0d |  | 0% | 0% |
| 99 | 1.1.3.2 | Elaboración de Acta de Cierre | 1d | 2011-06-02 | 2011-06-02 | 98 | 2011-06-02 | 2011-06-02 | 1d | -435d | 0d |  | 0% | 0% |
| 100 | 1.1.3.3 | **Relatorio de Proyectos** | 3d | 2011-06-03 | 2011-06-07 |  | 2011-06-03 | 2011-06-07 | 3d | -435d | 0d |  | 0% | 0% |
| 101 | 1.1.3.3.1 | Elaborar relatorio de proyecto | 1d | 2011-06-03 | 2011-06-03 | 99 | 2011-06-03 | 2011-06-03 | 1d | -435d | 0d |  | 0% | 0% |
| 102 | 1.1.3.3.2 | Revisión y ajustes de relatorio por el equipo del proyecto | 1d | 2011-06-06 | 2011-06-06 | 101 | 2011-06-06 | 2011-06-06 | 1d | -435d | 0d |  | 0% | 0% |
| 103 | 1.1.3.3.3 | Revisión de relatorio con los Proyectos | 1d | 2011-06-07 | 2011-06-07 | 102 | 2011-06-07 | 2011-06-07 | 1d | -435d | 0d |  | 0% | 0% |

| ID | WBS | Task | Duration | Start | Finish | Predecessors | Baseline start | Baseline finish | Baseline duration | Total slack | Free slack | Text6 | Text7 |
| --- | --- | --- | --- | --- | --- | --- | --- | --- | --- | --- | --- | --- | --- |
| 104 | 1.1.3.4 | **Gestión de Configuración** | 3d | 2011-06-08 | 2011-06-10 |  | 2011-06-08 | 2011-06-10 | 3d | -435d | 0d | 0% | 0% |
| 105 | 1.1.3.4.1 | Solicitar auditoria de GC | 1d | 2011-06-08 | 2011-06-08 | 100 | 2011-06-08 | 2011-06-08 | 1d | -435d | 0d | 0% | 0% |
| 106 | 1.1.3.4.2 | Auditoria de Gestión de Configuración de Proyecto | 1d | 2011-06-09 | 2011-06-09 | 105 | 2011-06-09 | 2011-06-09 | 1d | -435d | 0d | 0% | 0% |
| 107 | 1.1.3.4.3 | Archivar registros del proyecto | 1d | 2011-06-10 | 2011-06-10 | 106 | 2011-06-10 | 2011-06-10 | 1d | -435d | 0d | 0% | 0% |
| 108 | 1.2 | **Procesos de Ingeniería** | 5d | 2011-06-01 | 2011-06-07 |  | 2011-06-01 | 2011-06-07 | 5d | 27d |  | 0% | 0% |
| 109 | 1.2.1 | **SOFTPEDAJE** | 5d | 2011-06-01 | 2011-06-07 |  | 2011-06-01 | 2011-06-07 | 5d | 27d |  | 0% | 0% |
| 110 | 1.2.1.1 | **Analisis** | 5d | 2011-06-01 | 2011-06-07 |  | 2011-06-01 | 2011-06-07 | 5d | 27d |  | 0% | 0% |
| 111 | 1.2.1.1.1 | **Casos de Uso** | 3d | 2011-06-01 | 2011-06-03 |  | 2011-06-01 | 2011-06-03 | 3d | 27d |  | 0% | 0% |
| 112 | 1.2.1.1.1.1 | Entender el OGC | 1d | 2011-06-01 | 2011-06-01 |  | 2011-06-01 | 2011-06-01 | 1d | 27d | 0d | 0% | 0% |
| 113 | 1.2.1.1.1.2 | Capacitación en el OGC | 1d | 2011-06-02 | 2011-06-02 | 112 | 2011-06-02 | 2011-06-02 | 1d | 27d | 0d | 0% | 0% |
| 114 | 1.2.1.1.1.3 | Actualizar glosario de términos | 1d | 2011-06-03 | 2011-06-03 | 113 | 2011-06-03 | 2011-06-03 | 1d | 27d | 0d | 0% | 0% |
| 115 | 1.2.1.1.2 | **Modelo de Analisis** | 2d | 2011-06-06 | 2011-06-07 |  | 2011-06-06 | 2011-06-07 | 2d | 27d |  | 0% | 0% |
| 116 | 1.2.1.1.2.1 | Solicitud de relación de usuarios líderes al líder del proyecto | 1d | 2011-06-06 | 2011-06-06 | 114 | 2011-06-06 | 2011-06-06 | 1d | 27d | 0d | 0% | 0% |
| 117 | 1.2.1.1.2.2 | Solicitud de usuarios objetivos a los usuarios líderes | 1d | 2011-06-07 | 2011-06-07 | 116 | 2011-06-07 | 2011-06-07 | 1d | 27d |  | 0% | 0% |
| 118 | 1.2.1.2 | **Diseño** | 5d | 2011-06-01 | 2011-06-07 |  | 2011-06-01 | 2011-06-07 | 5d | 27d |  | 0% | 0% |
| 119 | 1.2.1.2.1 | **Documento de Diseño** | 1d | 2011-06-01 | 2011-06-01 |  | 2011-06-01 | 2011-06-01 | 1d | 31d |  | 0% | 0% |
| 120 | 1.2.1.2.1.1 | Análisis de la información | 1d | 2011-06-01 | 2011-06-01 |  | 2011-06-01 | 2011-06-01 | 1d | 31d |  | 0% | 0% |
| 121 | 1.2.1.2.1.2 | Definir forma y características de formación | 1d | 2011-06-01 | 2011-06-01 |  | 2011-06-01 | 2011-06-01 | 1d | 31d |  | 0% | 0% |
| 122 | 1.2.1.2.1.3 | Definir medios de comunicación | 1d | 2011-06-01 | 2011-06-01 |  | 2011-06-01 | 2011-06-01 | 1d | 31d |  | 0% | 0% |
| 123 | 1.2.1.2.1.4 | Elaboración de presentación de la estrategia | 1d | 2011-06-01 | 2011-06-01 |  | 2011-06-01 | 2011-06-01 | 1d | 31d |  | 0% | 0% |
| 124 | 1.2.1.2.2 | **Verificación del coordinador** | 2d | 2011-06-01 | 2011-06-02 |  | 2011-06-01 | 2011-06-02 | 2d | 30d |  | 0% | 0% |
| 125 | 1.2.1.2.2.1 | Verificación de la estrategía de formación y comunicación por el coordinador | 1d | 2011-06-01 | 2011-06-01 |  | 2011-06-01 | 2011-06-01 | 1d | 30d | 0d | 0% | 0% |
| 126 | 1.2.1.2.2.2 | Adecuación de Cambios | 1d | 2011-06-02 | 2011-06-02 | 125 | 2011-06-02 | 2011-06-02 | 1d | 30d |  | 0% | 0% |
| 127 | 1.2.1.2.3 | **Aseguramiento de calidad** | 5d | 2011-06-01 | 2011-06-07 |  | 2011-06-01 | 2011-06-07 | 5d | 27d |  | 0% | 0% |
| 128 | 1.2.1.2.3.1 | Preparar las actividades de QA. | 1d | 2011-06-01 | 2011-06-01 |  | 2011-06-01 | 2011-06-01 | 1d | 27d | 0d | 0% | 0% |
| 129 | 1.2.1.2.3.2 | Ejecutar la Revisión de QA | 1d | 2011-06-02 | 2011-06-02 | 128 | 2011-06-02 | 2011-06-02 | 1d | 27d | 0d | 0% | 0% |
| 130 | 1.2.1.2.3.3 | Ejecutar la Revisión de procesos | 1d | 2011-06-03 | 2011-06-03 | 129 | 2011-06-03 | 2011-06-03 | 1d | 29d |  | 0% | 0% |
| 131 | 1.2.1.2.3.4 | Levantar la No Conformidad | 1d | 2011-06-03 | 2011-06-03 | 129 | 2011-06-03 | 2011-06-03 | 1d | 27d | 0d | 0% | 0% |
| 132 | 1.2.1.2.3.5 | Realizar el seguimiento | 1d | 2011-06-06 | 2011-06-06 | 131 | 2011-06-06 | 2011-06-06 | 1d | 27d | 0d | 0% | 0% |
| 133 | 1.2.1.2.3.6 | Elaborar e Informar las actividades de QA a la Gerencia del Servicio | 1d | 2011-06-07 | 2011-06-07 | 132 | 2011-06-07 | 2011-06-07 | 1d | 27d |  | 0% | 0% |

| ID | WBS | Task | Duration | Start | Finish | Predecessors | Baseline start | Baseline finish | Baseline duration | Total slack | Free slack | Text6 | Text7 |
| --- | --- | --- | --- | --- | --- | --- | --- | --- | --- | --- | --- | --- | --- |
| 134 | 1.2.1.2.4 | **Validación del cliente** | 2d | 2011-06-01 | 2011-06-02 |  | 2011-06-01 | 2011-06-02 | 2d | 30d |  | 0% | 0% |
| 135 | 1.2.1.2.4.1 | Revisión de estrategía de comunicación y formación | 1d | 2011-06-01 | 2011-06-01 |  | 2011-06-01 | 2011-06-01 | 1d | 30d | 0d | 0% | 0% |
| 136 | 1.2.1.2.4.2 | Adecuación de cambios | 1d | 2011-06-02 | 2011-06-02 | 135 | 2011-06-02 | 2011-06-02 | 1d | 30d |  | 0% | 0% |
| 137 | 1.2.1.2.5 | **Gestión de la configuración** | 1d | 2011-06-01 | 2011-06-01 |  | 2011-06-01 | 2011-06-01 | 1d | 31d |  | 0% | 0% |
| 138 | 1.2.1.2.5.1 | Realizar Control de Cambios a Baselines | 1d | 2011-06-01 | 2011-06-01 |  | 2011-06-01 | 2011-06-01 | 1d | 31d |  | 0% | 0% |
| 139 | 1.2.1.3 | **Desarrollo** | 1d | 2011-06-01 | 2011-06-01 |  | 2011-06-01 | 2011-06-01 | 1d | 29d | 0d | 0% | 0% |
| 140 | 1.2.1.3.1 | **Iteración 1** | 1d | 2011-06-01 | 2011-06-01 |  | 2011-06-01 | 2011-06-01 | 1d | 29d |  | 0% | 0% |
| 141 | 1.2.1.3.1.1 | Planificación de Formación | 1d | 2011-06-01 | 2011-06-01 |  | 2011-06-01 | 2011-06-01 | 1d | 29d |  | 0% | 0% |
| 142 | 1.2.1.3.1.2 | Codigo Fuente 1 | 1d | 2011-06-01 | 2011-06-01 |  | 2011-06-01 | 2011-06-01 | 1d | 29d |  | 0% | 0% |
| 143 | 1.2.1.3.2 | **Iteración 2** | 1d | 2011-06-01 | 2011-06-01 |  | 2011-06-01 | 2011-06-01 | 1d | 29d |  | 0% | 0% |
| 144 | 1.2.1.3.2.1 | Verificación de la planificación de formación y comunicación | 1d | 2011-06-01 | 2011-06-01 |  | 2011-06-01 | 2011-06-01 | 1d | 29d |  | 0% | 0% |
| 145 | 1.2.1.3.2.2 | Adecuación de Cambios | 1d | 2011-06-01 | 2011-06-01 |  | 2011-06-01 | 2011-06-01 | 1d | 29d |  | 0% | 0% |
| 146 | 1.2.1.3.2.3 | Casos de Prueba | 1d | 2011-06-01 | 2011-06-01 |  | 2011-06-01 | 2011-06-01 | 1d | 29d |  | 0% | 0% |
| 147 | 1.2.1.3.3 | **Iteración 3** | 1d | 2011-06-01 | 2011-06-01 |  | 2011-06-01 | 2011-06-01 | 1d | 29d |  | 0% | 0% |
| 148 | 1.2.1.3.3.1 | Solución en ambiente de Pruebas | 1d | 2011-06-01 | 2011-06-01 |  | 2011-06-01 | 2011-06-01 | 1d | 29d |  | 0% | 0% |
| 149 | 1.2.1.3.3.2 | Gestión de configuración (líneas de base) | 1d | 2011-06-01 | 2011-06-01 |  | 2011-06-01 | 2011-06-01 | 1d | 29d |  | 0% | 0% |
| 150 | 1.2.1.3.3.3 | Validación de Usuario | 1d | 2011-06-01 | 2011-06-01 |  | 2011-06-01 | 2011-06-01 | 1d | 29d |  | 0% | 0% |
| 151 | 1.2.1.3.3.4 | Aceptación | 1d | 2011-06-01 | 2011-06-01 |  | 2011-06-01 | 2011-06-01 | 1d | 29d |  | 0% | 0% |
| 152 | 1.2.1.3.3.5 | Aceptación | 1d | 2011-06-01 | 2011-06-01 |  | 2011-06-01 | 2011-06-01 | 1d | 29d |  | 0% | 0% |
| 153 | 1.2.1.4 | **Implementación** | 2d | 2011-06-02 | 2011-06-03 | 139 | 2011-06-02 | 2011-06-03 | 2d | 29d |  | 0% | 0% |
| 154 | 1.2.1.4.1 | **Iteración 1** | 2d | 2011-06-02 | 2011-06-03 |  | 2011-06-02 | 2011-06-03 | 2d | 29d |  | 0% | 0% |
| 155 | 1.2.1.4.1.1 | Planificación de Formación | 1d | 2011-06-02 | 2011-06-02 |  | 2011-06-02 | 2011-06-02 | 1d | 29d | 0d | 0% | 0% |
| 156 | 1.2.1.4.1.2 | Solución en Procucción | 1d | 2011-06-03 | 2011-06-03 | 155 | 2011-06-03 | 2011-06-03 | 1d | 29d |  | 0% | 0% |
